Schedule from MS Project XML, 2026-07-06 to 2026-10-05.

## Calendars

- Standard: Mon-Fri 08:00-12:00, 13:00-17:00; Sat-Sun off.

## Resources

| Resource | Rate |
| --- | --- |
| Puntilla 2" 1/2 a 3" 1/2 |  |
| Madera medio cerco |  |
| Herramienta menor |  |
| Equipo topografico precision |  |
| Mano de obra cuadrilla topografica | 25904.4 |
| Herramienta menor 2 |  |
| Mano de obra cuadrilla aa | 15527.1 |
| Escombrera |  |
| volqueta |  |
| Herramienta menor 3 |  |
| Mezcla de concreto pobre de 3000psi |  |
| Herramienta menor 4 |  |
| Material de rio sucio-tierra |  |
| Mano de obra albeñeleria 1A | 6500 |
| Pison |  |
| Volqueta transporte petreos 1-10 km |  |
| Acero de 420 Mpa |  |
| Alambre negro |  |
| Segueta sin marco |  |
| Herramienta menor 5 |  |
| Tabla 1x 10 x 300 otobo |  |
| Vareta 2" x 2" x 3m otobo |  |
| Mezcla concreto 3000 psi |  |
| Mano de obra cuadrilla aa 2+1 | 20839.2 |
| vibrador electrico |  |
| Herramienta menor 6 |  |
| Puntilla 2" |  |
| Tabla 1 x 10 x 300 |  |
| Mezcla de concreto 1:2:3 21 Mpa |  |
| Mano de obra albañeleria 3a 1o | 28600 |
| Herramienta menor 7 |  |
| Herramienta menor 8 |  |
| Mezcla concreto de 3000 psi |  |
| formaleta |  |
| andamios |  |
| Herramienta menor 9 |  |
| Herramienta menor 10 |  |
| Caseton de guadua |  |
| Andamio |  |
| Herramienta menor 11 |  |
| mano de obra cuadrilla aa 3+1 | 26151.3 |
| Impermeable sika imprimante |  |
| Bloque ceramico |  |
| Mortero de pega 1:4 |  |
| Herramienta menor 12 |  |
| Mezcla grouting 3000psi |  |
| mano de obra cuadrilla aa 5 | 11587.1 |
| mano de obra cuadrilla aa 6 | 15527.1 |
| Herramienta menor 13 |  |
| Volqueta transporte materiales petreos |  |
| Thinner |  |
| Anticorrosivo rojo |  |
| Soldadura 6011 x 1/8” |  |
| Perfil hr c120mmx60mm‑1.5 |  |
| Mano obra albañilería 2 ayudante | 10624.8 |
| Mano obra carp.taller ayudante‑1 ofi | 23369.9 |
| Mano obra pintura 1 ayudante‑1 ofi | 17323.9 |
| Pulidora con piedra o disco |  |
| Soldador eléctrico |  |
| Oxicorte (oxígeno‑acetileno) |  |
| Andamio metálico tubular |  |
| Herramienta menor 14 |  |
| Torn autoge. 3/4x‑3/16 |  |
| Lámina policarbonato 8 mm |  |
| Remate u 6x2010 mm policarb |  |
| Silicona transparent. 11 oz |  |
| Cinta aluminio industrial |  |
| Mano obra albañilería 2 ayudante‑1 ofi | 20839.2 |
| Herramienta menor 15 |  |
| Cruceta andamio |  |
| Igas gris (sellante) 5 kg |  |
| Canaleta 43 de 4.00 |  |
| Torn met. Canaleta 43 |  |
| Mano obra albañilería 3 ayudante‑1 oficina | 26151.3 |
| Herramienta menor 16 |  |
| Bajante pvc cuadrado |  |
| Bajante pvc soporte |  |
| Soldadura pvc 1/4 gls |  |
| Torn p/mad 1 x 6 |  |
| Limpiador pvc 760‑g 1/4 gl |  |
| Mano obra albañilería 1 ayudante‑1 ofi | 15527.1 |
| Herramienta menor 17 |  |

## Schedule

| ID | WBS | Task | Type | Duration | Start | Finish | Predecessors | Resources |
| --- | --- | --- | --- | --- | --- | --- | --- | --- |
| 1 | 1 | **Proyecto** |  | 0d | 2026-07-06 | 2026-10-05 |  |  |
| 2 | 1.1 | **Preliminares** |  | 0d | 2026-07-06 | 2026-07-07 |  |  |
| 3 | 1.1.1 | Inicio del proyecto | milestone, manual | 0d | 2026-07-06 | 2026-07-06 |  |  |
| 4 | 1.1.2 | localización y replanteo | manual | 2d | 2026-07-06 | 2026-07-07 | 3 | Puntilla 2" 1/2 a 3" 1/2; Madera medio cerco; Herramienta menor; Equipo topografico precision; Mano de obra cuadrilla topografica [4.5%] |
| 5 | 1.2 | **Cimentación** |  | 0d | 2026-07-08 | 2026-07-31 |  |  |
| 6 | 1.2.1 | Excavación en tierra a mano, no incluye retiro | manual | 2d | 2026-07-08 | 2026-07-09 | 4 | Herramienta menor 2; Mano de obra cuadrilla aa [80.1%] |
| 7 | 1.2.2 | Retiro material sobrante | manual | 1d | 2026-07-10 | 2026-07-10 | 6 | Escombrera; Mano de obra cuadrilla aa [27.65%]; volqueta; Herramienta menor 3 |
| 8 | 1.2.3 | Solado e=0.05m | manual | 4d | 2026-07-13 | 2026-07-16 | 7 | Mezcla de concreto pobre de 3000psi; Mano de obra cuadrilla aa [25.19%]; Herramienta menor 4 |
| 9 | 1.2.4 | Relleno y compactación cimientos material importado solado e=0.05 m | manual | 3d | 2026-07-17 | 2026-07-21 | 8 | Material de rio sucio-tierra; Mano de obra albeñeleria 1A [68.33%]; Pison; Volqueta transporte petreos 1-10 km |
| 10 | 1.2.5 | Figurado y armada acero 60000 psi vaciado zapatas en concreto de 3000 psi | manual | 6d | 2026-07-22 | 2026-07-29 | 9 | Acero de 420 Mpa; Alambre negro; Mano de obra cuadrilla aa [102.93%]; Segueta sin marco; Herramienta menor 5 |
| 11 | 1.2.6 | Viga de cimentación de 3000 psi (0.25x0.25) | manual | 1d | 2026-07-30 | 2026-07-30 | 10 | Puntilla 2" 1/2 a 3" 1/2; Tabla 1x 10 x 300 otobo; Vareta 2" x 2" x 3m otobo; Mezcla concreto 3000 psi; Mano de obra cuadrilla aa 2+1 [249.28%]; vibrador electrico; Herramienta menor 6 |
| 12 | 1.2.7 | Losa de contrapiso en concreto 3000 psi, e=0.1m | manual | 1d | 2026-07-31 | 2026-07-31 | 11 | Puntilla 2"; Tabla 1 x 10 x 300; Mezcla de concreto 1:2:3 21 Mpa; Mano de obra albañeleria 3a 1o [225%]; vibrador electrico; Volqueta transporte petreos 1-10 km; Herramienta menor 7 |
| 13 | 1.3 | **Estructura primer piso** |  | 0d | 2026-08-03 | 2026-08-28 |  |  |
| 14 | 1.3.1 | Figurado y armada acero de Columnas primer piso | manual | 4d | 2026-08-03 | 2026-08-06 | 12 | Acero de 420 Mpa; Alambre negro; Mano de obra cuadrilla aa [84.3%]; Segueta sin marco; Herramienta menor 8 |
| 15 | 1.3.2 | Encofrado y vaciado columnas primer piso | manual | 4d | 2026-08-07 | 2026-08-12 | 14 | Mezcla concreto de 3000 psi; formaleta; andamios; Herramienta menor 9; vibrador electrico; Mano de obra cuadrilla aa 2+1 [58.51%] |
| 16 | 1.3.3 | Figurado y armada acero losa entrepiso | manual | 2d | 2026-08-13 | 2026-08-14 | 15 | Acero de 420 Mpa; Alambre negro; Mano de obra cuadrilla aa [94.77%]; Segueta sin marco; Herramienta menor 10 |
| 17 | 1.3.4 | Losa de entrepiso concreto de 3000 psi e=0.05m incluye encofrado | manual | 10d | 2026-08-17 | 2026-08-28 | 16 | Mezcla concreto de 3000 psi; Caseton de guadua; formaleta; Andamio; Herramienta menor 11; vibrador electrico; mano de obra cuadrilla aa 3+1 [94.7%] |
| 18 | 1.4 | **Muros primer piso** |  | 0d | 2026-08-31 | 2026-09-17 |  |  |
| 19 | 1.4.1 | Muro en bloque cerámico (0.15x0.13x0.24) | manual | 8d | 2026-08-31 | 2026-09-09 | 17 | Impermeable sika imprimante; Bloque ceramico; Mortero de pega 1:4; Herramienta menor 12; Mezcla grouting 3000psi; Andamio; mano de obra cuadrilla aa 5 [219.19%] |
| 20 | 1.4.2 | Pañete en interiores primer piso, e=0.02 m, 1:3 | manual | 6d | 2026-09-10 | 2026-09-17 | 19 | Mortero de pega 1:4; mano de obra cuadrilla aa 6 [183.27%]; Herramienta menor 13; Andamio; Volqueta transporte materiales petreos |
| 21 | 1.5 | **Cubierta metálica con teja en policarbonato** |  | 0d | 2026-09-18 | 2026-10-05 |  |  |
| 22 | 1.5.1 | Suministro e instalación Perfil cajón HR C 120X60 mm - 1.5 mm C.16 | manual | 3d | 2026-09-18 | 2026-09-22 | 20 | Thinner; Anticorrosivo rojo; Soldadura 6011 x 1/8”; Perfil hr c120mmx60mm‑1.5; Mano obra albañilería 2 ayudante [22%]; Mano obra carp.taller ayudante‑1 ofi [220%]; Mano obra pintura 1 ayudante‑1 ofi [44%]; Pulidora con piedra o disco; Soldador eléctrico; Oxicorte (oxígeno‑acetileno); Andamio metálico tubular; Herramienta menor 14 |
| 23 | 1.5.2 | Suministro e instalación de lámina Policarbonato Alveolar 8mm | manual | 6d | 2026-09-23 | 2026-09-30 | 22 | Torn autoge. 3/4x‑3/16; Lámina policarbonato 8 mm; Remate u 6x2010 mm policarb; Silicona transparent. 11 oz; Cinta aluminio industrial; Mano obra albañilería 2 ayudante‑1 ofi [88.29%]; Herramienta menor 15; Andamio metálico tubular; Cruceta andamio |
| 24 | 1.5.3 | Suministro e instalación de canaletas | manual | 1d | 2026-10-01 | 2026-10-01 | 23 | Igas gris (sellante) 5 kg; Canaleta 43 de 4.00; Torn met. Canaleta 43; Mano obra albañilería 3 ayudante‑1 oficina [30%]; Herramienta menor 16; Andamio metálico tubular; Cruceta andamio |
| 25 | 1.5.4 | Bajante aguas lluvias | manual | 1d | 2026-10-02 | 2026-10-02 | 24 | Bajante pvc cuadrado; Bajante pvc soporte; Soldadura pvc 1/4 gls; Torn p/mad 1 x 6; Limpiador pvc 760‑g 1/4 gl; Mano obra albañilería 1 ayudante‑1 ofi [60.75%]; Herramienta menor 17; Andamio metálico tubular; Cruceta andamio |
| 26 | 1.5.5 | Final del proyecto | milestone, manual | 0d | 2026-10-05 | 2026-10-05 | 25 |  |
